# CTRP2-ProjectSchedule

Schedule from MS Project, 2011-08-03 to 2012-07-16, A marks actual dates.

## Calendars

- Standard: Mon-Fri 08:00-12:00, 13:00-17:00; Sat-Sun off. Exceptions (off unless hours are given): 2011-12-26 (Christmas Observed), 2012-01-02 (New Year Observed), 2012-01-16 (MLK's Birthda Observed).

## Resources

| Resource |
| --- |
| Bala |
| Smita |
| Nelli |
| Paula |
| Hugh |
| Steve Matyas |
| Todd |
| Steve L |
| Sohal |
| Harsha |
| Naveen |
| BDA Team |
| Systems Team |
| QA3 |
| QA4 |
| QA5 |
| Vrushali |
| Max |
| VCDE |
| Anu |
| rushali |
| CTEP |
| caXchange |
| C3PR |
| caAERS |
| PSC |
| LV |
| BDA |
| "C3PR |
| Documentation |
| caGrid |
| QA |
| BAM |
| Edmond |
| NCI |
| SAIC-F |
| Web Team |
| Bill Dyer |
| CCTS Team |
| John S |
| Patrick |
| Architects |
| Christo |
| John |
| Rhett |
| Nellie |
| Steve |
| Kalpesh |
| David L |
| Stevel L |
| Kumar C |
| Gia |
| Wendy |
| Raj |
| Steve M |
| Lauren |
| Systems |
| CTRO |
| Hannes |
| SMEs |
| Gisele |
| Joe |
| CTRP Dev team |
| CBIIT |
| All |
| Analysts |
| TBD |
| Charles |
| ESST |
| Developers |
| Lisa |
| Christophe |
| Krishna |
| QA1 |
| QA2 |
| David |
| Security |
| Arch |
| Tech Leads |
| Paula B |
| Kalpana |
| KK |
| Abe |
| Kim |
| Vijay |
| CAT |
| George |
| Larry |
| Michael O |
| Resource 1 |
| Resource 2 |
| Resource3 |
| Resource 4 |
| Resource 5 |
| Gisele S |
| Dianne R |
| HR |
| NA |
| SL |
| ScenPro |
| 5AM |
| TP |
| EM |
| KE |
| JM |
| DL |
| Paul |
| Michael |
| Eilis |
| Team |
| Dev team |
| Ram P |
| NIH 508 team |
| Bryan |
| Bill D |
| Quy |
| Andrew |
| Rashmi |
| Jacob |
| Winston |
| UPT Team |
| Curators |
| Jill |
| Juli |
| caIntegrator Team |
| JJ |
| Deb |
| Santosh |
| Mervi |
| ARB |
| Xiaopeng |
| Ye |

## Schedule

| ID | WBS | Task | Type | Duration | Start | Finish | Predecessors | Complete | Remaining | Total slack | Constraint | Resources | Work | Actual work |
| --- | --- | --- | --- | --- | --- | --- | --- | --- | --- | --- | --- | --- | --- | --- |
| 1 | 1 | **CAARRAY 2.x** |  | 246d? | 2011-08-03 A | 2012-07-16 |  | 67% | 80.14d? | 0d | start no earlier than 2011-08-03 |  | 10697.6h | 3071.2h |
| 2 | 1.1 | **2.4.1** |  | 39d | 2011-08-10 A | 2011-10-03 |  | 99% | 0d | 0d | start no earlier than 2011-08-10 |  | 1000h | 68.8h |
| 3 | 1.1.1 | **2.4.1 RC6** |  | 25d | 2011-08-10 A | 2011-09-13 |  | 99% | 0d | 0d |  | Andrew; Quy; Rashmi | 600h |  |
| 4 | 1.1.1.1 | caArray Importer: Regression test on local tier (New) |  | 20d | 2011-08-10 A | 2011-09-06 A |  | 100% |  |  |  |  |  |  |
| 5 | 1.1.1.2 | caArray Importer: Test import on local tier (New) |  | 20d | 2011-08-10 A | 2011-09-06 A |  | 100% |  |  |  |  |  |  |
| 6 | 1.1.1.3 | API Partner Testing on STAGE |  | 20d | 2011-08-10 A | 2011-09-06 A |  | 100% |  |  |  |  |  |  |
| 7 | 1.1.1.4 | Section 508 compliance: Run scan and issue-manage. |  | 20d | 2011-08-10 A | 2011-09-06 A |  | 100% |  |  |  |  |  |  |
| 8 | 1.1.1.5 | Write Grid client to get expt and hyb counts for Ken Buetow (New) |  | 20d | 2011-08-10 A | 2011-09-06 A |  | 100% |  |  |  |  |  |  |
| 9 | 1.1.1.6 | Write and test QTP automated script to load TCGA data (New) |  | 20d | 2011-08-10 A | 2011-09-06 A |  | 100% |  |  |  |  |  |  |
| 10 | 1.1.1.7 | Bug fix for ARRAY-2059 that is a blocker for the TCGA data load |  | 20d | 2011-08-10 A | 2011-09-06 A |  | 100% |  |  |  |  |  |  |
| 11 | 1.1.1.8 | Section 508 compliance: Fix ARRAY-1911 to get 90% score |  | 20d | 2011-08-10 A | 2011-09-06 A |  | 100% |  |  |  |  |  |  |
| 12 | 1.1.1.9 | Decide on solution to TCGA data load issue (New) |  | 20d | 2011-08-10 A | 2011-09-06 A |  | 100% |  |  |  |  |  |  |
| 13 | 1.1.1.10 | Bug fix for ARRAY-2055 |  | 20d | 2011-08-10 A | 2011-09-06 A |  | 100% |  |  |  |  |  |  |
| 14 | 1.1.1.11 | Temporary bug fix for ARRAY-2053 |  | 25d | 2011-08-10 A | 2011-09-13 A |  | 100% |  |  |  |  |  |  |
| 15 | 1.1.1.12 | Test bug fixes on QA tier |  | 25d | 2011-08-10 A | 2011-09-13 A |  | 100% |  |  |  |  |  |  |
| 16 | 1.1.2 | **2.4.1 Deployment** |  | 14d | 2011-09-14 A | 2011-10-03 | 3 | 99% | 0d | 0d |  | Rashmi; Andrew; Quy | 400h | 68.8h |
| 17 | 1.1.2.1 | Regression testing on QA tier |  | 5d | 2011-09-14 A | 2011-09-20 A |  | 100% |  |  |  |  |  |  |
| 18 | 1.1.2.2 | Test bug fixes on STAGE |  | 5d | 2011-09-14 A | 2011-09-20 A |  | 100% |  |  |  |  |  |  |
| 19 | 1.1.2.3 | Regression testing on STAGE |  | 5d | 2011-09-21 A | 2011-09-27 A | 17 | 100% |  |  |  |  |  |  |
| 20 | 1.1.2.4 | Upload Release Artifacts |  | 2d | 2011-09-21 A | 2011-09-22 A | 17 | 100% |  |  |  |  |  |  |
| 21 | 1.1.2.5 | App Scan on STAGE |  | 3d | 2011-09-21 A | 2011-09-23 A | 17 | 100% |  |  |  | Systems | 24h | 24h |
| 22 | 1.1.2.6 | Add README_caArray_and_UPT.txt |  | 1d | 2011-09-26 A | 2011-09-26 A | 21 | 100% |  |  |  |  |  |  |
| 23 | 1.1.2.7 | Deploy to PRODUCTION |  | 5d | 2011-09-27 A | 2011-10-03 A | 22 | 100% |  |  |  | Systems | 40h | 40h |
| 24 | 1.2 | RELEASE 2.4.1 | milestone | 0d | 2011-09-30 A | 2011-09-30 A | 23 | 100% |  |  |  |  |  |  |

| ID | WBS | Task | Duration | Start | Finish | Predecessors | Complete | Remaining | Total slack | Constraint | Resources | Work | Actual work |
| --- | --- | --- | --- | --- | --- | --- | --- | --- | --- | --- | --- | --- | --- |
| 25 | 1.3 | **2.5.0** | 216d | 2011-09-14 A | 2012-07-16 | 3 | 49% | 109.42d | 0d |  |  | 9697.6h | 3002.4h |
| 26 | 1.3.1 | **Iterations M15-M17** | 52d | 2011-09-14 A | 2011-11-24 |  | 99% | 0d | 0d |  | Andrew; KK; Quy; Rashmi | 2016h | 352h |
| 27 | 1.3.1.1 | Merge in plug-in arch, file system storage, Jboss5 and get local CI build working (ARRAY-1804, ARRAY-1595, ARRAY-1896) | 10d | 2011-09-14 A | 2011-09-27 A |  | 100% |  |  |  |  |  |  |
| 28 | 1.3.1.2 | BDALite: Migrate caArray build from Ivy to Nexus (ARRAY-2073) (New) | 7d | 2011-09-28 A | 2011-10-06 A | 27 | 100% |  |  |  | Systems; KK | 112h | 112h |
| 29 | 1.3.1.3 | BDALite: Artifact configuration at build time and PTE form (ARRAY-2067, ARRAY-1967) | 7d | 2011-09-28 A | 2011-10-06 A | 27 | 100% |  |  |  |  |  |  |
| 30 | 1.3.1.4 | BDALite: Migrate BDA build from Ivy to Nexus (ARRAY-2085) (New) | 15d | 2011-10-07 A | 2011-10-27 A | 28 | 100% |  |  |  | Systems; KK | 240h | 240h |
| 31 | 1.3.1.5 | BDALite: Migrate to AntHill Pro 3 - Prerequisites (ARRAY-2103, ARRAY-2121) | 15d | 2011-10-07 A | 2011-10-27 A | 29 | 100% |  |  |  |  |  |  |
| 32 | 1.3.1.6 | Curation Tier upgrade to 2.4.1 | 3d | 2011-10-28 A | 2011-11-01 A | 30 | 100% |  |  |  |  |  |  |
| 33 | 1.3.1.7 | Merge in 2.4.1 fixes into 2.5.0 (ARRAY-2069) | 5d | 2011-10-28 A | 2011-11-03 A | 30 | 100% |  |  |  |  |  |  |
| 34 | 1.3.1.8 | Get CI build tested and working (ARRAY-2021, 2120, 2122, 2123, 2064, 2122, 1960, 2152) | 10d | 2011-11-04 A | 2011-11-17 A | 33 | 100% |  |  |  |  |  |  |
| 35 | 1.3.1.9 | Jboss 5.1 / Java 6 upgrade - Fix Installer (ARRAY-1567, 2124, 2125, 2144, 2145, 2141, 2142, 2147, 2148) | 5d | 2011-11-11 A | 2011-11-17 A | 34 | 100% |  |  |  |  |  |  |
| 36 | 1.3.1.10 | File system storage of raw files (transaction spanning DB and filesystem) (ARRAY-1752) | 5d | 2011-11-18 A | 2011-11-24 A | 35 | 100% |  |  |  |  |  |  |
| 37 | 1.3.1.11 | Xenoline: Data analysis and meetings (New) | 2d | 2011-11-18 A | 2011-11-21 A | 35 | 100% |  |  |  |  |  |  |
| 38 | 1.3.1.12 | TRANSCEND: Requirements meetings and test data set-up | 5d | 2011-11-18 A | 2011-11-24 A | 35 | 100% |  |  |  |  |  |  |
| 39 | 1.3.1.13 | Jboss 5.1 / Java 6 upgrade - Test 2.4.x to 2.5.0 migration path (ARRAY-2126, ARRAY-2127) | 5d | 2011-11-18 A | 2011-11-24 A | 35 | 100% |  |  |  |  |  |  |
| 40 | 1.3.2 | **Iteration M18** | 13d | 2011-11-25 A | 2011-12-13 A | 39 | 100% |  |  |  |  | 376h | 376h |
| 41 | 1.3.2.1 | Bug fixes (ARRAY-2165,2166) | 3d | 2011-11-25 A | 2011-11-29 A |  | 100% |  |  |  | KK | 24h | 24h |
| 42 | 1.3.2.2 | BDALite: AHP 3 prerequisite: Standalone liquibase upgrades (ARRAY-2105) (New) | 5d | 2011-11-30 A | 2011-12-06 A | 41 | 100% |  |  |  | KK; Systems | 80h | 80h |
| 43 | 1.3.2.3 | Orphaned experiments: Blocking issue for user (ARRAY-2183) (New) | 5d | 2011-11-25 A | 2011-12-01 A |  | 100% |  |  |  | Rashmi | 40h | 40h |
| 44 | 1.3.2.4 | Design for large import splitting into multiple transactions (ARRAY-2146) | 5d | 2011-11-25 A | 2011-12-01 A |  | 100% |  |  |  | Todd; Rashmi | 80h | 80h |
| 45 | 1.3.2.5 | Bug fixes (ARRAY-2167,2149) | 5d | 2011-12-07 A | 2011-12-13 A | 42 | 100% |  |  |  | KK | 40h | 40h |
| 46 | 1.3.2.6 | Design for remote file locations (ARRAY-2156) | 2d | 2011-12-12 A | 2011-12-13 A |  | 100% |  |  | start no earlier than 2011-12-12 | Todd | 16h | 16h |
| 47 | 1.3.2.7 | QA testing | 10d | 2011-11-25 A | 2011-12-08 A |  | 100% |  |  |  | Quy | 80h | 80h |
| 48 | 1.3.2.8 | BDALite: AHP 3: Database properties at build time (ARRAY-2197) (New) | 1d | 2011-12-07 A | 2011-12-07 A | 42 | 100% |  |  |  | Systems; KK | 16h | 16h |

| ID | WBS | Task | Duration | Start | Finish | Predecessors | Complete | Remaining | Total slack | Resources | Work | Actual work |
| --- | --- | --- | --- | --- | --- | --- | --- | --- | --- | --- | --- | --- |
| 49 | 1.3.3 | **Iteration M19** | 9d | 2011-12-14 A | 2011-12-27 A | 40 | 100% |  |  |  | 288h | 288h |
| 50 | 1.3.3.1 | Bug fixes for new Agilent import problems (ARRAY-2198, ARRAY-2203) (New) | 5d | 2011-12-14 A | 2011-12-20 A |  | 100% |  |  | KK; Todd | 80h | 80h |
| 51 | 1.3.3.2 | ARRAY-2159 - Splitting Imports: Utility classes to break up a MAGE-TAB set | 5d | 2011-12-14 A | 2011-12-20 A |  | 100% |  |  | KK; Todd | 80h | 80h |
| 52 | 1.3.3.3 | ARRAY-2187 - Splitting Imports: MAGE-TAB Transaction Set model and DAO | 4d | 2011-12-21 A | 2011-12-27 A | 51 | 100% |  |  | KK; Todd | 64h | 64h |
| 53 | 1.3.3.4 | ARRAY-2205 - BDALite: AHP3 troubleshooting (New) | 1d | 2011-12-14 A | 2011-12-14 A |  | 100% |  |  | KK; Systems | 16h | 16h |
| 54 | 1.3.3.5 | QA testing | 5d | 2011-12-14 A | 2011-12-20 A |  | 100% |  |  | Quy | 40h | 40h |
| 55 | 1.3.3.6 | Discuss TRANSCEND Data Authorization approach with ESSRT | 1d | 2011-12-14 A | 2011-12-14 A |  | 100% |  |  | Rashmi | 8h | 8h |
| 56 | 1.3.4 | **Iteration M20** | 9d | 2011-12-28 A | 2012-01-10 A | 49 | 100% |  |  |  | 504h | 504h |
| 57 | 1.3.4.1 | ARRAY-2217 - BDALite: Update bda-lite:database:update:prepare target to include the "environment" property (New) | 2d | 2011-12-28 A | 2011-12-29 A |  | 100% |  |  | KK; Systems | 32h | 32h |
| 58 | 1.3.4.2 | ARRAY-1968 - BDALite: AHP 3 build track troubleshooting (New) | 5d | 2011-12-30 A | 2012-01-06 A | 57 | 100% |  |  | KK; Systems | 80h | 80h |
| 59 | 1.3.4.3 | ARRAY-2188 - Splitting Imports: New state model | 4d | 2011-12-28 A | 2012-01-03 A |  | 100% |  |  | KK; Todd | 64h | 64h |
| 60 | 1.3.4.4 | Bug fixes for Illumina BGX, MageTabExporter and AssayType display (ARRAY-2202, 2181, 2204) (New) | 6d | 2011-12-28 A | 2012-01-05 A |  | 100% |  |  | KK; Todd | 96h | 96h |
| 61 | 1.3.4.5 | ARRAY-2208 - Improvement: Reduce CI build time for import tests | 2d | 2012-01-09 A | 2012-01-10 A | 58 | 100% |  |  | KK; Todd | 32h | 32h |
| 62 | 1.3.4.6 | QA Test Suite updates for 2.5.0: Splitting Imports (ARRAY-2206) | 5d | 2011-12-28 A | 2012-01-04 A |  | 100% |  |  | Quy | 40h | 40h |
| 63 | 1.3.4.7 | ARRAY-2219 - Onboard new software engineers | 5d | 2011-12-28 A | 2012-01-04 A |  | 100% |  |  | Paul; Winston; KK; Todd | 160h | 160h |
| 64 | 1.3.5 | **Iteration M21** | 9d | 2012-01-11 A | 2012-01-24 | 56 | 99% | 0.04d | 0d |  | 993.6h | 982.4h |
| 65 | 1.3.5.1 | ARRAY-2189 - Splitting Imports: Validate and Import transactions | 3d | 2012-01-11 A | 2012-01-13 A |  | 100% |  |  | KK; Todd; Paul; Winston | 96h | 96h |
| 66 | 1.3.5.2 | ARRAY-2190 - Splitting Imports: Modify import service to perform the split | 5d | 2012-01-11 A | 2012-01-18 A |  | 100% |  |  | KK; Todd; Paul; Winston | 160h | 160h |
| 67 | 1.3.5.3 | ARRAY-2199 - Splitting Imports: Hide split files from user | 4d | 2012-01-19 A | 2012-01-24 A | 66 | 100% |  |  | KK; Todd; Paul; Winston | 128h | 128h |
| 68 | 1.3.5.4 | ARRAY-2191 - Splitting Imports: Support SDRF where multiple rows reference the same data file | 1d | 2012-01-19 A | 2012-01-19 A | 66 | 100% |  |  | KK; Todd; Paul; Winston | 32h | 32h |
| 69 | 1.3.5.5 | ARRAY-2232 - Splitting Imports: Make Job Queue child-aware (New) | 3d | 2012-01-19 A | 2012-01-23 A | 66 | 100% |  |  | KK; Todd; Paul; Winston | 96h | 96h |
| 70 | 1.3.5.6 | Investigate Technology for Improved Upload (ARRAY-1899) - Pros and cons | 3d | 2012-01-11 A | 2012-01-13 A |  | 100% |  |  | Paul | 24h | 24h |
| 71 | 1.3.5.7 | ARRAY-2005 - Allow remote locations for native files (Won't Fix) | 1d | 2012-01-11 A | 2012-01-11 A |  | 100% |  |  | Rashmi | 8h | 8h |
| 72 | 1.3.5.8 | ARRAY-2214 - Bug: Experiments disappear after PROD-to-STAGE database copy. (New) | 2d | 2012-01-11 A | 2012-01-12 A |  | 100% |  |  | Systems; KK; Quy | 48h | 48h |
| 73 | 1.3.5.9 | ARRAY-2252 - Bug: AgilentFileImportIntegrationTest fails on trunk (New) | 3d | 2012-01-11 A | 2012-01-13 A |  | 100% |  |  | KK; Todd; Paul; Winston | 96h | 96h |
| 74 | 1.3.5.10 | ARRAY-2236,2237,2240 - Improvement: Reduce build time for Illumina and Affy validation/service tests | 1d | 2012-01-11 A | 2012-01-11 A |  | 100% |  |  | KK; Todd; Paul; Winston | 32h | 32h |
| 75 | 1.3.5.11 | ARRAY-2170 - Support: Build documentation/README out of date | 2d | 2012-01-11 A | 2012-01-12 A |  | 100% |  |  | Winston | 16h | 16h |
| 76 | 1.3.5.12 | ARRAY-2230 - Support: Initial investigation into building from 2.4.0 source (New) | 2d | 2012-01-11 A | 2012-01-12 A |  | 100% |  |  | KK | 16h | 16h |
| 77 | 1.3.5.13 | ARRAY-2250 - BDALite: AHP3 build of QA-VM failed due to missing Gforge library (New) | 1d | 2012-01-11 A | 2012-01-11 A |  | 100% |  |  | KK; Todd | 16h | 16h |
| 78 | 1.3.5.14 | ARRAY-2227 - BDALite: Move caArray-QA to AHP3 build/deploy track (New) | 1d | 2012-01-24 A | 2012-01-24 A | 81 | 100% |  |  | Quy; Systems; KK | 24h | 24h |
| 79 | 1.3.5.15 | ARRAY-2260 - BDALite: AHP3 database upgrade fails on QA-VM (New) | 2d | 2012-01-12 A | 2012-01-13 A | 77 | 100% |  |  | Systems; KK; Quy | 48h | 48h |
| 80 | 1.3.5.16 | ARRAY-2261 - BDALite: Cannot build from trunk via AHP3 on QA-VM (New) | 2d | 2012-01-17 A | 2012-01-18 A | 79 | 100% |  |  | Systems; KK; Quy | 48h | 48h |
| 81 | 1.3.5.17 | ARRAY-2262 - BDALite: Could not login to QA-VM after AHP3 build | 3d | 2012-01-19 A | 2012-01-23 A | 80 | 100% |  |  | Systems; KK; Quy | 72h | 72h |
| 82 | 1.3.5.18 | QA Test Plan Review (internal) | 2d | 2012-01-11 A | 2012-01-12 A |  | 100% |  |  | Quy | 16h | 16h |
| 83 | 1.3.5.19 | Coordinate release dates for caArray and caIntegrator | 1d | 2012-01-24 A | 2012-01-24 |  | 80% | 0.2d | 0d | Rashmi; caIntegrator Team; Juli; Mervi; JJ; Deb; Larry | 17.6h | 6.4h |

| ID | WBS | Task | Duration | Start | Finish | Predecessors | Complete | Remaining | Total slack | Free slack | Constraint | Resources | Work | Actual work |
| --- | --- | --- | --- | --- | --- | --- | --- | --- | --- | --- | --- | --- | --- | --- |
| 84 | 1.3.6 | **Iteration M22** | 10d | 2012-01-25 A | 2012-02-07 | 64 | 53% | 4.71d | 0d |  |  |  | 896h | 500h |
| 85 | 1.3.6.1 | ARRAY-2270 - Clarify TRANSCEND security architecture with ESSRT. | 1d | 2012-01-25 A | 2012-01-25 A |  | 100% |  |  |  |  | Rashmi; Santosh | 16h | 16h |
| 86 | 1.3.6.2 | Prototype IE browser fallback for Improved Upload | 3d | 2012-01-25 A | 2012-01-27 |  | 50% | 1.5d | 7d |  |  | Paul | 24h | 12h |
| 87 | 1.3.6.3 | ARRAY-2267 - Document any restrictions/assumptions for large data upload/import/download/export. | 2d | 2012-01-25 | 2012-01-26 |  |  |  | 8d |  |  | Rashmi | 16h |  |
| 88 | 1.3.6.4 | ARRAY-2253 - Bug: caIntegrator cannot retrieve parsed data from caArray with Jboss 5 (New) | 2d | 2012-01-25 A | 2012-01-26 A |  | 100% |  |  |  |  | KK; Todd; Paul; Quy; caIntegrator Team | 80h | 80h |
| 89 | 1.3.6.5 | ARRAY-2231 - Bug: Experiment inconsistencies between Curation and PROD (New) | 1d | 2012-01-25 A | 2012-01-25 A |  | 100% |  |  |  |  | KK; Todd; Paul; Quy | 32h | 32h |
| 90 | 1.3.6.6 | ARRAY-2192 - Splitting Imports: Stop parent import job from Job Queue | 5d | 2012-01-25 A | 2012-01-31 A |  | 100% |  |  |  |  | KK; Todd; Paul; Quy | 160h | 160h |
| 91 | 1.3.6.7 | ARRAY-2193 - Splitting Imports: Resume of cancelled import job | 5d | 2012-02-01 A | 2012-02-07 | 90 | 50% | 2.5d | 0d |  |  | KK; Todd; Paul; Quy | 160h | 80h |
| 92 | 1.3.6.8 | ARRAY-2194 - Splitting Imports: Resume of failed import job with problematic data files | 2d | 2012-01-25 | 2012-01-26 |  |  |  | 8d |  |  | KK; Todd; Paul; Quy | 64h |  |
| 93 | 1.3.6.9 | ARRAY-2195 - Splitting Imports: Resume of failed import job with problematic SDRF | 2d | 2012-01-25 | 2012-01-26 |  |  |  | 8d |  |  | KK; Todd; Paul; Quy | 64h |  |
| 94 | 1.3.6.10 | ARRAY-2233 - Splitting Imports: Support 2-colour designs | 1d | 2012-01-25 | 2012-01-25 |  |  |  | 9d |  |  | KK; Todd; Paul; Quy | 32h |  |
| 95 | 1.3.6.11 | ARRAY-2235 - Splitting Imports: Child files need to be cleaned up (New) | 1d | 2012-01-25 A | 2012-01-25 A |  | 100% |  |  |  |  | KK; Todd; Paul; Quy | 32h | 32h |
| 96 | 1.3.6.12 | ARRAY-2266: Regression Test 2.5.0 on QA tiers | 5d | 2012-01-25 A | 2012-01-31 | 77, 78, 79, 80 | 50% | 2.5d | 5d |  |  | Quy; Systems | 80h | 40h |
| 97 | 1.3.6.13 | ARRAY-1692 - Security vulnerability fix by upgrading struts (New) | 3d | 2012-01-25 A | 2012-01-27 |  | 50% | 1.5d | 7d |  |  | KK; Todd; Paul; Quy | 96h | 48h |
| 98 | 1.3.6.14 | ARRAY-2271 - QA Test Plan Review (NCI) | 1d | 2012-02-07 | 2012-02-07 |  |  |  | 0d |  | start no earlier than 2012-02-07 | Quy; Juli; JJ; Deb; Larry | 40h |  |
| 99 | 1.3.7 | **Iteration M23** | 10d | 2012-02-08 | 2012-02-21 | 84 |  |  | 0d |  |  |  | 616h |  |
| 100 | 1.3.7.1 | ARRAY-2272 - BDALite: Unified target (New) | 2d | 2012-02-08 | 2012-02-09 |  |  |  | 6d | 0d |  | Systems; KK; Quy | 48h |  |
| 101 | 1.3.7.2 | ARRAY-2104 - BDALite: osgi plugin location (New) | 2d | 2012-02-10 | 2012-02-13 | 100 |  |  | 6d |  |  | Systems; KK; Quy | 48h |  |
| 102 | 1.3.7.3 | ARRAY-2283 - BDALite: Sizing requirements for all tiers (New) | 1d | 2012-02-08 | 2012-02-08 |  |  |  | 9d |  |  | Rashmi; Quy; Systems; Xiaopeng; Juli | 40h |  |
| 103 | 1.3.7.4 | ARRAY-1627 - Support resumable uploads of large file sets - Part 1 | 10d | 2012-02-08 | 2012-02-21 |  |  |  | 0d |  |  | Todd; Paul; Quy | 240h |  |
| 104 | 1.3.7.5 | Demo large imports | 1d | 2012-02-08 | 2012-02-08 |  |  |  | 9d |  |  | Rashmi | 8h |  |
| 105 | 1.3.7.6 | Meeting with Architecture Review Board re: Improved Uploads | 1d | 2012-02-08 | 2012-02-08 | 86 |  |  | 9d |  |  | Rashmi; Paul; ARB | 24h |  |
| 106 | 1.3.7.7 | Re-run Section 508 compliance scan | 1d | 2012-02-08 | 2012-02-08 |  |  |  | 9d |  |  | Rashmi | 8h |  |
| 107 | 1.3.7.8 | UAT of large imports by curators (New) | 4d | 2012-02-08 | 2012-02-13 |  |  |  | 6d |  |  | Curators; Rashmi | 64h |  |
| 108 | 1.3.7.9 | ARRAY-2269 - Document performance requirements for large data upload/import/download/export | 2d | 2012-02-08 | 2012-02-09 |  |  |  | 8d |  |  | Rashmi | 16h |  |
| 109 | 1.3.7.10 | Bug triage | 3d | 2012-02-08 | 2012-02-10 |  |  |  | 7d |  |  | Juli; JJ; Quy; Rashmi; Paul | 120h |  |

| ID | WBS | Task | Duration | Start | Finish | Predecessors | Total slack | Resources | Work |
| --- | --- | --- | --- | --- | --- | --- | --- | --- | --- |
| 110 | 1.3.8 | **Improved Upload** | 10d | 2012-02-22 | 2012-03-06 | 99 | 0d |  | 232h |
| 111 | 1.3.8.1 | ARRAY-1627 - Finish implementing resumable uploads of large file sets | 8d | 2012-02-22 | 2012-03-02 |  | 0d | Todd; Paul; Quy | 192h |
| 112 | 1.3.8.2 | Demo resumable uploads | 1d | 2012-03-05 | 2012-03-05 | 111 | 1d | Rashmi | 8h |
| 113 | 1.3.8.3 | UAT of resumable uploads by curators (New) | 2d | 2012-03-05 | 2012-03-06 | 111 | 0d | Curators; Rashmi | 32h |
| 114 | 1.3.9 | **Maintenance** | 10d | 2012-02-22 | 2012-03-06 | 99 | 0d |  | 280h |
| 115 | 1.3.9.1 | ARRAY-1806 - Ensure API works with storage engine SPI | 5d | 2012-02-22 | 2012-02-28 |  | 0d | KK; Todd; Quy | 120h |
| 116 | 1.3.9.2 | ARRAY-1391 - Support API access by Java 1.6 clients | 3d | 2012-02-29 | 2012-03-02 | 115 | 0d | KK; Todd; Ye | 72h |
| 117 | 1.3.9.3 | API (CQL) changes to account for file system storage (ARRAY-1729) | 2d | 2012-03-05 | 2012-03-06 | 116 | 0d | KK; Todd; Quy | 48h |
| 118 | 1.3.9.4 | QA Test Suite updates for 2.5.0: Move Test Cases to Quality Center | 5d | 2012-02-22 | 2012-02-28 |  | 5d | Quy | 40h |
| 119 | 1.3.10 | **UPT Configurability** | 5d | 2012-03-07 | 2012-03-13 | 114, 110 | 0d |  | 120h |
| 120 | 1.3.10.1 | ARRAY-2258 - Test new UPT configurability to disallow caArray user group creation within UPT (New) | 2d | 2012-03-07 | 2012-03-08 |  | 0d | UPT Team; Quy; KK | 48h |
| 121 | 1.3.10.2 | ARRAY-2259 - Update installer to configure UPT to disallow user group creation for caArray within UPT (New) | 3d | 2012-03-09 | 2012-03-13 | 120 | 0d | KK; Todd; Quy | 72h |
| 122 | 1.3.11 | **Support for caIntegrator Automatic Refresh (TRANSCEND)** | 10d | 2012-03-07 | 2012-03-20 | 110, 114 | 0d |  | 160h |
| 123 | 1.3.11.1 | ARRAY-2273/1932 - Implement API to return whether experiment was changed in time period | 5d | 2012-03-07 | 2012-03-13 |  | 0d | Paul; Todd; Ye | 120h |
| 124 | 1.3.11.2 | Integration testing of Automatic Refresh with caIntegrator | 5d | 2012-03-14 | 2012-03-20 | 123 | 0d | caIntegrator Team | 40h |
| 125 | 1.3.12 | **Permissions Model (TRANSCEND)** | 5d | 2012-03-14 | 2012-03-20 | 110, 114, 119 | 0d |  | 120h |
| 126 | 1.3.12.1 | ARRAY-1938 - Allow sample search by arbitrary characteristics on Permissions page | 5d | 2012-03-14 | 2012-03-20 |  | 0d | KK; Todd; Quy | 120h |
| 127 | 1.3.13 | **Single Sign-on (TRANSCEND)** | 20d | 2012-03-21 | 2012-04-17 | 125, 122 | 0d |  | 720h |
| 128 | 1.3.13.1 | ARRAY-1930 - Single sign-on between caArray and caIntegrator | 15d | 2012-03-21 | 2012-04-10 |  | 0d | Paul; KK; Todd; Quy | 480h |
| 129 | 1.3.13.2 | Integration testing of Single sign-on | 5d | 2012-04-11 | 2012-04-17 | 128 | 0d | caIntegrator Team; Paul; KK; Todd; Quy; Systems | 240h |
| 130 | 1.3.14 | **Audit Trail (TRANSCEND)** | 5d | 2012-04-18 | 2012-04-24 | 127 | 0d |  | 160h |
| 131 | 1.3.14.1 | ARRAY-1931 - Sample deletions and data imports | 3d | 2012-04-18 | 2012-04-20 |  | 0d | Paul; KK; Todd; Quy | 96h |
| 132 | 1.3.14.2 | ARRAY-1933 - Log visibility to Data Owner | 2d | 2012-04-23 | 2012-04-24 | 131 | 0d | Paul; KK; Todd; Quy | 64h |
| 133 | 1.3.15 | **Maintenance** | 5d | 2012-04-25 | 2012-05-01 | 130 | 0d |  | 120h |
| 134 | 1.3.15.1 | ARRAY-2295 - Patch 2.4.1 source code to point to ncisvn | 2d | 2012-04-25 | 2012-04-26 |  | 0d | KK; Quy; Systems | 48h |
| 135 | 1.3.15.2 | ARRAY-1803 - Fix liquibase scripts to eliminate two-step installation process | 3d | 2012-04-27 | 2012-05-01 | 134 | 0d | KK; Quy; Systems | 72h |
| 136 | 1.3.16 | Bug Fixes | 10d | 2012-05-02 | 2012-05-15 | 133 | 0d | Paul; Quy; KK; Todd | 320h |

| ID | WBS | Task | Duration | Start | Finish | Predecessors | Total slack | Free slack | Resources | Work |
| --- | --- | --- | --- | --- | --- | --- | --- | --- | --- | --- |
| 137 | 1.3.17 | **Beta 1** | 10d | 2012-05-16 | 2012-05-29 | 136 | 0d |  |  | 440h |
| 138 | 1.3.17.1 | Backup and replication for file system - NCI tiers and local installer documentation (ARRAY-1809) | 9d | 2012-05-16 | 2012-05-28 |  | 1d |  | KK; Systems | 144h |
| 139 | 1.3.17.2 | Bug Fixes | 9d | 2012-05-16 | 2012-05-28 |  | 0d |  | KK; Todd; Paul; Quy | 288h |
| 140 | 1.3.17.3 | Deployment: Deploy Beta 1 to STAGE. | 1d | 2012-05-29 | 2012-05-29 | 139 | 0d |  | Systems | 8h |
| 141 | 1.3.18 | **Release Candidate 1** | 10d | 2012-05-30 | 2012-06-12 | 137 | 0d |  |  | 472h |
| 142 | 1.3.18.1 | Deployment: Run security app scan on Beta 1. | 3d | 2012-05-30 | 2012-06-01 |  | 7d |  | Systems | 24h |
| 143 | 1.3.18.2 | STAGE Regression testing of Beta 1. | 5d | 2012-05-30 | 2012-06-05 |  | 2d | 0d | Quy | 40h |
| 144 | 1.3.18.3 | Installer testing of Beta 1. | 3d | 2012-06-06 | 2012-06-08 | 143 | 2d |  | Quy | 24h |
| 145 | 1.3.18.4 | Support Beta 1 testing by API partners. | 5d | 2012-05-30 | 2012-06-05 |  | 5d |  | Rashmi | 40h |
| 146 | 1.3.18.5 | Documentation: Send User's Guide changes to Jill. | 2d | 2012-05-30 | 2012-05-31 |  | 8d |  | Rashmi | 16h |
| 147 | 1.3.18.6 | ARRAY-2092 - Documentation: Send Installation Guide changes to Jill. | 4d | 2012-05-30 | 2012-06-04 |  | 6d |  | KK | 32h |
| 148 | 1.3.18.7 | Bug Fixes | 9d | 2012-05-30 | 2012-06-11 |  | 0d |  | KK; Todd; Paul; Quy | 288h |
| 149 | 1.3.18.8 | Deployment: Deploy RC1 to STAGE. | 1d | 2012-06-12 | 2012-06-12 | 148 | 0d |  | Systems | 8h |
| 150 | 1.3.19 | **Release Candidate 2** | 10d | 2012-06-13 | 2012-06-26 | 141 | 0d |  |  | 512h |
| 151 | 1.3.19.1 | Deployment: Run security app scan on RC1. | 3d | 2012-06-13 | 2012-06-15 |  | 7d |  | Systems | 24h |
| 152 | 1.3.19.2 | STAGE testing of RC1. | 3d | 2012-06-13 | 2012-06-15 |  | 7d |  | Quy | 24h |
| 153 | 1.3.19.3 | Support RC1 testing by API partners. | 3d | 2012-06-13 | 2012-06-15 |  | 7d |  | Rashmi | 24h |
| 154 | 1.3.19.4 | Deployment: Create skeleton Gforge release package and release notes | 2d | 2012-06-13 | 2012-06-14 |  | 8d |  | Rashmi | 16h |
| 155 | 1.3.19.5 | Deployment: Point application to draft release notes | 4d | 2012-06-13 | 2012-06-18 |  | 6d |  | KK | 32h |
| 156 | 1.3.19.6 | Bug Fixes - only Blocker and Critical | 8d | 2012-06-13 | 2012-06-22 |  | 0d |  | KK; Todd; Paul; Quy | 256h |
| 157 | 1.3.19.7 | Documentation: Finish Draft User's Guide. | 4d | 2012-06-13 | 2012-06-18 |  | 4d | 0d | Jill | 32h |
| 158 | 1.3.19.8 | Documentation: Review Draft User's Guide. | 2d | 2012-06-19 | 2012-06-20 | 157 | 4d |  | Rashmi | 16h |
| 159 | 1.3.19.9 | Documentation: Finish Draft Installation Guide. | 4d | 2012-06-13 | 2012-06-18 |  | 4d | 0d | Jill | 32h |
| 160 | 1.3.19.10 | Documentation: Review Draft Installation Guide. | 2d | 2012-06-19 | 2012-06-20 | 159 | 4d |  | KK; Quy | 32h |
| 161 | 1.3.19.11 | Deployment: Deploy RC2 to STAGE. | 2d | 2012-06-25 | 2012-06-26 | 156 | 0d |  | Systems | 16h |
| 162 | 1.3.19.12 | Deployment: Send Draft release notes to Juli to send to Communications Office | 1d | 2012-06-13 | 2012-06-13 |  | 9d |  | Rashmi | 8h |

| ID | WBS | Task | Type | Duration | Start | Finish | Predecessors | Total slack | Free slack | Resources | Work |
| --- | --- | --- | --- | --- | --- | --- | --- | --- | --- | --- | --- |
| 163 | 1.3.20 | **Release Candidate 3** |  | 10d | 2012-06-27 | 2012-07-10 | 150 | 0d |  |  | 312h |
| 164 | 1.3.20.1 | STAGE testing of RC2 |  | 2d | 2012-06-27 | 2012-06-28 |  | 8d |  | Quy | 16h |
| 165 | 1.3.20.2 | Documentation: Finish final User's Guide. |  | 2d | 2012-06-27 | 2012-06-28 |  | 7d | 0d | Jill | 16h |
| 166 | 1.3.20.3 | Documentation: Review final User's Guide. |  | 1d | 2012-06-29 | 2012-06-29 | 165 | 7d |  | Rashmi | 8h |
| 167 | 1.3.20.4 | Documentation: Finish final Installation Guide. |  | 2d | 2012-06-27 | 2012-06-28 |  | 7d | 0d | Jill | 16h |
| 168 | 1.3.20.5 | Documentation: Review final Installation Guide. |  | 1d | 2012-06-29 | 2012-06-29 | 167 | 7d |  | KK; Quy | 16h |
| 169 | 1.3.20.6 | Bug Fixes - only Blockers |  | 5d | 2012-06-27 | 2012-07-03 |  | 0d |  | KK; Todd; Paul; Quy | 160h |
| 170 | 1.3.20.7 | Deployment: Deploy RC3 (GA) to STAGE. |  | 2d | 2012-07-04 | 2012-07-05 | 169 | 0d |  | Systems | 16h |
| 171 | 1.3.20.8 | Deployment: Run security app scan on RC3 (GA) |  | 2d | 2012-07-06 | 2012-07-09 | 170 | 1d |  | Systems | 16h |
| 172 | 1.3.20.9 | STAGE testing of RC3 (GA) |  | 3d | 2012-07-06 | 2012-07-10 | 170 | 0d |  | Quy | 24h |
| 173 | 1.3.20.10 | Deployment: Create GA release artifacts and upload to Gforge. |  | 1d | 2012-06-27 | 2012-06-27 |  | 9d |  | Rashmi | 8h |
| 174 | 1.3.20.11 | Deployment: Support GA testing by API partners. |  | 2d | 2012-06-27 | 2012-06-28 |  | 8d |  | Rashmi | 16h |
| 175 | 1.3.21 | **Deployment** |  | 4d | 2012-07-11 | 2012-07-16 | 163 | 0d |  |  | 40h |
| 176 | 1.3.21.1 | Deployment: Deploy GA to PRODUCTION |  | 3d | 2012-07-11 | 2012-07-13 | 142 | 0d |  | Systems | 24h |
| 177 | 1.3.21.2 | Deployment: Update product landing page |  | 1d | 2012-07-11 | 2012-07-11 |  | 3d |  | Rashmi | 8h |
| 178 | 1.3.21.3 | Deployment: Juli announces the release to the community |  | 1d | 2012-07-16 | 2012-07-16 | 176 | 0d |  | Juli | 8h |
| 179 | 1.4 | RELEASE 2.5.0 | milestone | 0d | 2012-07-16 | 2012-07-16 | 175 | 0d |  |  |  |
| 181 | 1.5 | NOTE: New items identified during the course of the contract are highlighted in yellow | milestone | 0d | 2011-08-03 | 2011-08-03 |  | 230d |  |  |  |
| 182 | 1.6 | NOTE: External dependencies are in Red in the Resource Names column | milestone | 0d | 2011-08-03 | 2011-08-03 |  | 230d |  |  |  |
| 183 | 1.7 | NOTE: Architecture for TRANSCEND requirements is undecided as yet, and can change some of the LOEs for release 2.6 |  | 1d? | 2011-08-03 | 2011-08-03 |  | 229d |  |  |  |
